How a schedule from MS Project changed from version to version. A marks actual dates.

## Version 1 (saved 2022-03-31)

Note of the change: Create Plan.mpp

| ID | WBS | Task | Duration | Start | Finish | Predecessors | Complete |
| --- | --- | --- | --- | --- | --- | --- | --- |
| 1 | 1 | **Диплом** | 185d | 2021-09-10 A | 2022-05-26 |  | 100% |
| 2 |  | Разработка ТЗ | 10d | 2021-09-10 A | 2021-09-23 A |  | 100% |
| 3 |  | Анализ отечественных и зарубежных аналогов | 5d | 2021-09-24 A | 2021-09-30 A | 2 | 100% |
| 4 |  | Анализ предметной области | 4d | 2021-10-01 A | 2021-10-06 A | 3 | 100% |
| 5 |  | Выбор технологии, среды и языка программирования | 5d | 2021-10-07 A | 2021-10-13 A | 4 | 100% |
| 6 |  | Анализ процесса обработки информации, выбор структур данных для ее хранения, выбор методов и алгоритмов решения | 5d | 2021-10-14 A | 2021-10-20 A | 5 | 100% |
| 7 | 1.6 | **Разработка спецификации и архитектуры ПО** | 42d | 2021-10-21 A | 2021-12-17 A | 6 | 100% |
| 8 |  | Построение ДВИ | 6d | 2021-10-21 A | 2021-10-28 A |  | 100% |
| 9 |  | Построение контекстной диаграммы классов | 5d | 2021-10-29 A | 2021-11-04 A | 8 | 100% |
| 10 |  | Построение диаграмм последовательности системы для каждого варианта использования | 7d | 2021-11-05 A | 2021-11-15 A | 9 | 100% |
| 11 |  | Построение диаграмм деятельностей сценариев вариантов использования | 4d | 2021-11-16 A | 2021-11-19 A | 10 | 100% |
| 12 |  | Проектирование структур данных и построение диаграмм отношений компонентов данных | 15d | 2021-11-22 A | 2021-12-10 A | 11 | 100% |
| 13 |  | Доработка разработанных диаграмм | 5d | 2021-12-13 A | 2021-12-17 A | 12 | 100% |
| 14 | 1.7 | **Проектирование системы и пользовательского интерфейса** | 23d | 2021-12-20 A | 2022-01-19 A | 7 | 100% |
| 15 |  | Проектирование системы | 15d | 2021-12-20 A | 2022-01-07 A |  | 100% |
| 16 |  | Проектирование пользовательского интерфейса | 8d | 2022-01-10 A | 2022-01-19 A | 15 | 100% |
| 17 | 1.8 | **Разработка программного обеспечения** | 85d | 2022-01-20 A | 2022-05-18 A | 14 | 100% |
| 18 | 1.8.1 | **Разработка пакета Presentation Layer** | 27d | 2022-01-20 A | 2022-02-25 A |  | 100% |
| 19 |  | Разработка пакета ViewModels | 5d | 2022-01-20 A | 2022-01-26 A |  | 100% |
| 20 |  | Разработка пакета Views | 7d | 2022-01-27 A | 2022-02-04 A | 19 | 100% |
| 21 |  | Разработка пакета Models | 15d | 2022-02-07 A | 2022-02-25 A | 20 | 100% |
| 22 | 1.8.2 | **Разработка пакета Business Layer** | 17d | 2022-02-28 A | 2022-03-22 A | 18 | 100% |
| 23 |  | Разработка пакета Detection | 7d | 2022-02-28 A | 2022-03-08 A |  | 100% |
| 24 |  | Разработка пакета Services | 10d | 2022-03-09 A | 2022-03-22 A | 23 | 100% |
| 25 | 1.8.3 | **Разработка пакета DataLayer** | 26d | 2022-03-23 A | 2022-04-27 A | 22 | 100% |
| 26 |  | Разработка пакета Reading | 5d | 2022-03-23 A | 2022-03-29 A |  | 100% |
| 27 |  | Разработка пакета DataBase Sending | 10d | 2022-03-30 A | 2022-04-12 A | 26 | 100% |
| 28 |  | Разработка пакета Teams Sending | 11d | 2022-04-13 A | 2022-04-27 A | 27 | 100% |
| 29 | 1.8.4 | **Разработка пакета CrossLayer** | 15d | 2022-04-28 A | 2022-05-18 A | 25 | 100% |
| 30 |  | Разработка пакета Extensions | 4d | 2022-04-28 A | 2022-05-03 A |  | 100% |
| 31 |  | Разработка пакета Data | 5d | 2022-05-04 A | 2022-05-10 A | 30 | 100% |
| 32 |  | Разработка пакета Exceptions | 6d | 2022-05-11 A | 2022-05-18 A | 31 | 100% |
| 33 |  | Тестирование | 5d | 2022-05-19 A | 2022-05-25 A | 17 | 100% |

## Version 2 (saved 2022-04-01)

Note of the change: add plan

Last finish stays 2022-05-26. Complete tasks 25 → 18.

Changed:

| ID | Task | Start | Finish | Complete | Total float |
| --- | --- | --- | --- | --- | --- |
| 1 | **Диплом** |  |  | 100% → 75% |  |
| 17 | **Разработка программного обеспечения** |  | 2022-05-18 A → 2022-05-18 | 100% → 52% | none → 1d |
| 25 | **Разработка пакета DataLayer** | 2022-03-23 A → 2022-03-23 | 2022-04-27 A → 2022-04-27 | 100% → 0% | none → 1d |
| 26 | Разработка пакета Reading | 2022-03-23 A → 2022-03-23 | 2022-03-29 A → 2022-03-29 | 100% → 0% | none → 1d |
| 27 | Разработка пакета DataBase Sending | 2022-03-30 A → 2022-03-30 | 2022-04-12 A → 2022-04-12 | 100% → 0% | none → 1d |
| 28 | Разработка пакета Teams Sending | 2022-04-13 A → 2022-04-13 | 2022-04-27 A → 2022-04-27 | 100% → 0% | none → 1d |
| 29 | **Разработка пакета CrossLayer** | 2022-04-28 A → 2022-04-28 | 2022-05-18 A → 2022-05-18 | 100% → 0% | none → 1d |
| 30 | Разработка пакета Extensions | 2022-04-28 A → 2022-04-28 | 2022-05-03 A → 2022-05-03 | 100% → 0% | none → 1d |
| 31 | Разработка пакета Data | 2022-05-04 A → 2022-05-04 | 2022-05-10 A → 2022-05-10 | 100% → 0% | none → 1d |
| 32 | Разработка пакета Exceptions | 2022-05-11 A → 2022-05-11 | 2022-05-18 A → 2022-05-18 | 100% → 0% | none → 1d |
| 33 | Тестирование | 2022-05-19 A → 2022-05-19 | 2022-05-25 A → 2022-05-25 | 100% → 0% | none → 1d |
